# ProjekatRazvojaEnergetskogČokoladnogMleka

How a schedule from MS Project changed from version to version. A marks actual dates.

## Version 1 (saved 2026-02-08, file ProjekatEnergCokoMleko.mpp)

| ID | WBS | Task | Duration | Start | Finish | Predecessors | Total float | Constraint |
| --- | --- | --- | --- | --- | --- | --- | --- | --- |
| 1 | 1 | **Istraživanje tržišta I potrošača** | 38d | 2026-01-20 | 2026-03-12 |  | 0d |  |
| 2 |  | Analiza potreba ciljnih grupa | 8d | 2026-01-20 | 2026-01-29 |  | 0d |  |
| 3 |  | Istraživanje potrošačkih navika i percepcije „energetskih“ napitaka | 15d | 2026-01-30 | 2026-02-19 | 2 | 0d |  |
| 4 |  | Analiza konkurentskih proizvoda | 8d | 2026-02-25 | 2026-03-06 | 3FS+3d | 0d |  |
| 5 |  | Analiza trendova u industriji | 4d | 2026-03-09 | 2026-03-12 | 4 | 0d |  |
| 6 | 2 | **Definisanje tržišne pozicije proizvoda** | 94d | 2026-03-13 | 2026-07-23 |  |  |  |
| 7 |  | Određivanje funkcionalne koristi | 40d | 2026-03-13 | 2026-05-08 | 5 | 0d |  |
| 8 |  | Izbor izvora energije | 22d | 2026-05-11 | 2026-06-09 | 7 | 0d |  |
| 9 |  | Definisanje nutritivnih i zdravstvenih tvrdnji | 13d | 2026-06-10 | 2026-06-26 | 8 | 0d |  |
| 10 |  | Razrada ciljnog ukusa i teksture | 13d | 2026-06-29 | 2026-07-15 | 9 | 0d |  |
| 11 | 3 | **Razvoj recepture** | 95d | 2026-07-16 | 2026-11-26 |  |  |  |
| 12 |  | Odabir baze | 21d | 2026-07-16 | 2026-08-13 | 10 | 0d |  |
| 13 |  | Izbor kakaa | 33d | 2026-08-14 | 2026-09-29 | 12 | 0d |  |
| 14 |  | Dodavanje izvora energije | 28d | 2026-09-30 | 2026-11-06 | 13 | 0d |  |
| 15 |  | Optimizacija ukusa i teksture | 10d | 2026-11-09 | 2026-11-23 | 14 | 0d |  |
| 16 | 4 | **Testiranja i ispitivanja** | 10d | 2026-11-24 | 2026-12-07 |  |  |  |
| 17 |  | Mikrobiološka ispitivanja | 2d | 2026-11-24 | 2026-11-25 | 15 | 0d |  |
| 18 |  | Provera alergena | 2d | 2026-11-26 | 2026-11-27 | 17 | 0d |  |
| 19 |  | Usklađenost sa HACCP i zakonskim propisima | 5d | 2026-11-30 | 2026-12-04 | 18 | 0d |  |
| 20 |  | Potpisivanje HACCP ugovora | 0d | 2026-12-04 | 2026-12-04 | 19FF | 0d |  |
| 21 | 5 | **Dizajn ambalaže** | 20d | 2026-12-05 | 2026-12-31 |  |  |  |
| 22 |  | Izbor praktične ambalaže | 4d | 2026-12-07 | 2026-12-10 | 20 | 0d |  |
| 23 |  | Razvoj vizuelnog identiteta | 8d | 2026-12-11 | 2026-12-22 | 22 | 0d |  |
| 24 |  | Jasno isticanje energetskih i nutritivnih benefita | 5d | 2026-12-23 | 2026-12-29 | 23 | 0d |  |
| 25 |  | Testiranje kod potrošača | 6d | 2026-12-30 | 2027-01-08 | 24 | 0d |  |
| 26 |  | Marketing i pozicioniranje | 4d | 2027-01-11 | 2027-01-14 | 25 | 0d |  |
| 27 |  | Lansiranje i praćenje | 5d | 2027-01-15 | 2027-01-21 | 26 | 0d |  |
| 28 | 9 | **Sastanci u vezi napretka projekta** | 258d | 2026-01-20 | 2027-01-20 |  | 1d |  |
| 29 |  | Sastanci u vezi napretka projekta 1 | 1d | 2026-01-20 | 2026-01-20 |  | 258d | start no earlier than 2026-01-20 |
| 30 |  | Sastanci u vezi napretka projekta 2 | 1d | 2026-02-20 | 2026-02-20 |  | 235d | start no earlier than 2026-02-20 |
| 31 |  | Sastanci u vezi napretka projekta 3 | 1d | 2026-03-20 | 2026-03-20 |  | 215d | start no earlier than 2026-03-20 |
| 32 |  | Sastanci u vezi napretka projekta 4 | 1d | 2026-04-20 | 2026-04-20 |  | 194d | start no earlier than 2026-04-20 |
| 33 |  | Sastanci u vezi napretka projekta 5 | 1d | 2026-05-20 | 2026-05-20 |  | 173d | start no earlier than 2026-05-20 |
| 34 |  | Sastanci u vezi napretka projekta 6 | 1d | 2026-06-22 | 2026-06-22 |  | 150d | start no earlier than 2026-06-20 |
| 35 |  | Sastanci u vezi napretka projekta 7 | 1d | 2026-07-20 | 2026-07-20 |  | 130d | start no earlier than 2026-07-20 |
| 36 |  | Sastanci u vezi napretka projekta 8 | 1d | 2026-08-20 | 2026-08-20 |  | 107d | start no earlier than 2026-08-20 |
| 37 |  | Sastanci u vezi napretka projekta 9 | 1d | 2026-09-21 | 2026-09-21 |  | 85d | start no earlier than 2026-09-20 |
| 38 |  | Sastanci u vezi napretka projekta 10 | 1d | 2026-10-20 | 2026-10-20 |  | 64d | start no earlier than 2026-10-20 |
| 39 |  | Sastanci u vezi napretka projekta 11 | 1d | 2026-11-20 | 2026-11-20 |  | 42d | start no earlier than 2026-11-20 |
| 40 |  | Sastanci u vezi napretka projekta 12 | 1d | 2026-12-21 | 2026-12-21 |  | 21d | start no earlier than 2026-12-20 |
| 41 |  | Sastanci u vezi napretka projekta 13 | 1d | 2027-01-20 | 2027-01-20 |  | 1d | start no earlier than 2027-01-20 |

## Version 2 (data date 2026-07-21, saved 2026-02-08, file ProjekatEnergCokoMleko - Tracking.mpp)

Last finish stays 2027-01-21. Complete tasks 0 → 14.

Changed:

| ID | Task | Start | Finish | Duration | Complete | Total float |
| --- | --- | --- | --- | --- | --- | --- |
| 1 | **Istraživanje tržišta I potrošača** | 2026-01-20 A | 2026-03-12 → 2026-03-17 A (+5d) | 38d → 41d | 0% → 100% | 0d → none |
| 2 | Analiza potreba ciljnih grupa | 2026-01-20 A | 2026-01-29 A |  | 0% → 100% | 0d → none |
| 3 | Istraživanje potrošačkih navika i percepcije „energetskih“ napitaka | 2026-01-30 A | 2026-02-19 A |  | 0% → 100% | 0d → none |
| 4 | Analiza konkurentskih proizvoda | 2026-02-25 A | 2026-03-06 A |  | 0% → 100% | 0d → none |
| 5 | Analiza trendova u industriji | 2026-03-09 → 2026-03-12 A (+3d) | 2026-03-12 → 2026-03-17 A (+5d) |  | 0% → 100% | 0d → none |
| 6 | **Definisanje tržišne pozicije proizvoda** | 2026-03-13 A |  |  | 0% → 99% |  |
| 7 | Određivanje funkcionalne koristi | 2026-03-13 A | 2026-05-08 A |  | 0% → 100% | 0d → none |
| 8 | Izbor izvora energije | 2026-05-11 → 2026-05-10 A (-1d) | 2026-06-09 A |  | 0% → 100% | 0d → none |
| 9 | Definisanje nutritivnih i zdravstvenih tvrdnji | 2026-06-10 → 2026-06-04 A (-6d) | 2026-06-26 A | 13d → 17d | 0% → 100% | 0d → none |
| 10 | Razrada ciljnog ukusa i teksture | 2026-06-29 → 2026-07-02 A (+3d) | 2026-07-15 → 2026-07-20 (+5d) |  | 0% → 90% | 0d → 1d |
| 11 | **Razvoj recepture** | 2026-07-16 A |  |  | 0% → 4% |  |
| 12 | Odabir baze | 2026-07-16 A |  |  | 0% → 19% |  |
| 28 | **Sastanci u vezi napretka projekta** | 2026-01-20 A |  |  | 0% → 54% |  |
| 29 | Sastanci u vezi napretka projekta 1 | 2026-01-20 A | 2026-01-20 A |  | 0% → 100% | 258d → none |
| 30 | Sastanci u vezi napretka projekta 2 | 2026-02-20 A | 2026-02-20 A |  | 0% → 100% | 235d → none |
| 31 | Sastanci u vezi napretka projekta 3 | 2026-03-20 A | 2026-03-20 A |  | 0% → 100% | 215d → none |
| 32 | Sastanci u vezi napretka projekta 4 | 2026-04-20 A | 2026-04-20 A |  | 0% → 100% | 194d → none |
| 33 | Sastanci u vezi napretka projekta 5 | 2026-05-20 A | 2026-05-20 A |  | 0% → 100% | 173d → none |
| 34 | Sastanci u vezi napretka projekta 6 | 2026-06-22 A | 2026-06-22 A |  | 0% → 100% | 150d → none |
| 35 | Sastanci u vezi napretka projekta 7 | 2026-07-20 A | 2026-07-20 A |  | 0% → 100% | 130d → none |
